Schedule from Planner, 2015-02-25 to 2015-03-20.

## Calendars

- PI_G2: Mon-Sat as the base calendar; Sun off. Exceptions (off unless hours are given): 2015-02-25 09:00-12:00, 13:00-17:30.

## Resources

| Resource | Group |
| --- | --- |
| Vianney DANJOU | ChefDeProjet |
| Gaetan BUSATO | Developpeur |
| Guillaume CONTE | Developpeur |
| Agathe FURET | GardienDuTemps |
| Arbia MAGOURI | ResponsableQualité |
| Andreea OPRISOR | Developpeur |

## Schedule

| ID | WBS | Task | Type | Duration | Start | Finish | Predecessors | Complete | Constraint | Resources | Work |
| --- | --- | --- | --- | --- | --- | --- | --- | --- | --- | --- | --- |
| 1 | 1 | **TacheContinue** |  |  | 2015-02-25 | 2015-03-19 |  |  |  |  | 54.96h |
| 2 | 1.1 | MaintienQualité |  | 15.94d | 2015-02-25 | 2015-03-19 |  | 24% |  | Arbia MAGOURI [20%] | 25.5h |
| 3 | 1.2 | MaintienGlossaire |  | 14.62d | 2015-02-26 | 2015-03-19 | 10 | 20% |  | Vianney DANJOU [3%]; Gaetan BUSATO [3%]; Guillaume CONTE [3%]; Agathe FURET [3%]; Arbia MAGOURI [3%]; Andreea OPRISOR [3%] | 21.06h |
| 4 | 1.3 | MaintienGrannt |  | 14.62d | 2015-02-26 | 2015-03-19 | 12 | 20% |  | Vianney DANJOU [5%] | 5.85h |
| 5 | 1.4 | SurveillanceTemp |  | 15.94d | 2015-02-25 | 2015-03-19 |  | 24% |  | Agathe FURET [2%] | 2.55h |
| 6 | 2 | **TacheAudit1** |  |  | 2015-02-25 | 2015-03-02 |  |  |  |  | 188.56h |
| 7 | 2.1 | Reunion RPROJ1 |  |  | 2015-02-25 | 2015-02-25 |  | 100% |  | Vianney DANJOU; Gaetan BUSATO; Guillaume CONTE; Agathe FURET; Arbia MAGOURI; Andreea OPRISOR | 18h |
| 8 | 2.2 | PAQL |  |  | 2015-02-25 | 2015-02-27 | 7 | 100% |  | Arbia MAGOURI [77%] | 13.09h |
| 9 | 2.3 | DiagrammeTache |  |  | 2015-02-25 | 2015-02-26 | 7 | 100% |  | Gaetan BUSATO | 7.5h |
| 10 | 2.4 | RealisationGlossaireExigenceActeur |  |  | 2015-02-25 | 2015-02-26 | 7 | 100% |  | Guillaume CONTE; Andreea OPRISOR | 15h |
| 11 | 2.5 | DiagrammeUML |  |  | 2015-02-25 | 2015-02-27 | 7 | 100% |  | Gaetan BUSATO [97%]; Agathe FURET [95%] | 32.64h |
| 12 | 2.6 | DiagrammeGrannt |  |  | 2015-02-25 | 2015-02-26 | 7 | 100% |  | Vianney DANJOU | 7.5h |
| 13 | 2.7 | HIMAbstrait |  |  | 2015-02-26 | 2015-02-27 | 9 | 100% |  | Vianney DANJOU [92%]; Guillaume CONTE [97%]; Andreea OPRISOR [97%] | 21.45h |
| 14 | 2.8 | DaseDeDonneTunelSSH |  |  | 2015-02-26 | 2015-02-26 |  | 100% | must start on 2015-02-26 | Vianney DANJOU [92%]; Gaetan BUSATO [97%] | 4h |
| 15 | 2.9 | DiapoAudit1 |  |  | 2015-02-27 | 2015-03-02 |  |  | must start on 2015-02-27 |  | 10.5h |
| 16 | 2.10 | PrepaLivraison |  |  | 2015-02-27 | 2015-02-27 | 13, 8, 9, 10, 11, 12 | 100% |  | Vianney DANJOU [92%]; Gaetan BUSATO [97%]; Guillaume CONTE [97%]; Agathe FURET [95%]; Arbia MAGOURI [77%]; Andreea OPRISOR [97%] | 13.88h |
| 17 | 2.11 | Livraison 1 | milestone | 0d | 2015-02-27 | 2015-02-27 | 16 |  |  |  |  |
| 18 | 2.12 | PrepaAudit1 |  | 0.69d | 2015-03-02 | 2015-03-02 |  |  | start no earlier than 2015-03-02 | Vianney DANJOU; Gaetan BUSATO; Guillaume CONTE; Agathe FURET; Arbia MAGOURI; Andreea OPRISOR | 33h |
| 19 | 2.13 | Audit1 | milestone | 0d | 2015-03-02 | 2015-03-02 | 18 |  |  | Vianney DANJOU; Gaetan BUSATO; Guillaume CONTE; Agathe FURET; Arbia MAGOURI; Andreea OPRISOR |  |
| 20 | 2.14 | DebrifAudit + RepartitionTache |  |  | 2015-03-02 | 2015-03-02 | 19 |  |  | Vianney DANJOU; Gaetan BUSATO; Guillaume CONTE; Agathe FURET; Arbia MAGOURI; Andreea OPRISOR | 12h |
| 21 | 3 | **TacheAudit2** |  |  | 2015-03-03 | 2015-03-11 |  |  |  |  | 272.22h |
| 22 | 3.1 | **DaseDeDoonée** |  |  | 2015-03-03 | 2015-03-09 |  |  |  |  | 64.06h |
| 23 | 3.1.1 | RepriseDiagrammeUML |  |  | 2015-03-03 | 2015-03-03 | 20 |  |  | Gaetan BUSATO [97%]; Agathe FURET [95%] | 5.76h |
| 24 | 3.1.2 | ModelRelationnel |  |  | 2015-03-03 | 2015-03-04 | 23 |  |  | Vianney DANJOU [92%]; Guillaume CONTE [97%] | 22.68h |
| 25 | 3.1.3 | CreationBD |  |  | 2015-03-05 | 2015-03-05 | 24 |  |  | Guillaume CONTE [97%] | 7.28h |
| 26 | 3.1.4 | TansfertAncieneBD |  |  | 2015-03-06 | 2015-03-09 | 25 |  |  | Vianney DANJOU [92%]; Andreea OPRISOR [97%] | 28.35h |

| ID | WBS | Task | Type | Duration | Start | Finish | Predecessors | Constraint | Resources | Work |
| --- | --- | --- | --- | --- | --- | --- | --- | --- | --- | --- |
| 27 | 3.2 | **CreerCompetition** |  |  | 2015-03-03 | 2015-03-09 |  |  |  | 58.55h |
| 28 | 3.2.1 | views |  |  | 2015-03-05 | 2015-03-05 | 33 | start no earlier than 2015-03-03 | Gaetan BUSATO [97%]; Agathe FURET [95%] | 14.4h |
| 29 | 3.2.2 | Model |  |  | 2015-03-03 | 2015-03-05 | 23 |  | Arbia MAGOURI [50%]; Andreea OPRISOR [50%] | 19.25h |
| 30 | 3.2.3 | DataAccessObjets |  |  | 2015-03-06 | 2015-03-09 | 25, 29 |  | Gaetan BUSATO [47%]; Guillaume CONTE [47%] | 14.1h |
| 31 | 3.2.4 | Controlers |  |  | 2015-03-06 | 2015-03-09 | 25, 29 |  | Agathe FURET [45%]; Arbia MAGOURI [27%] | 10.8h |
| 32 | 3.3 | **InscriptionDelegation** |  |  | 2015-03-03 | 2015-03-09 |  |  |  | 72.98h |
| 33 | 3.3.1 | Views |  |  | 2015-03-03 | 2015-03-04 | 20 |  | Gaetan BUSATO [97%]; Agathe FURET [95%] | 28.8h |
| 34 | 3.3.2 | Model |  |  | 2015-03-03 | 2015-03-05 | 23 |  | Arbia MAGOURI [27%]; Andreea OPRISOR [47%] | 14.43h |
| 35 | 3.3.3 | DataAccessObject |  |  | 2015-03-06 | 2015-03-09 | 34, 33, 25 |  | Gaetan BUSATO [50%]; Guillaume CONTE [50%] | 14.75h |
| 36 | 3.3.4 | Controlers |  |  | 2015-03-06 | 2015-03-09 | 35SS, 33 |  | Agathe FURET [50%]; Arbia MAGOURI [50%] | 15h |
| 37 | 3.4 | Integration |  |  | 2015-03-10 | 2015-03-10 | 32, 22 |  | Vianney DANJOU [92%]; Gaetan BUSATO [97%]; Guillaume CONTE [97%]; Agathe FURET [95%]; Arbia MAGOURI [77%]; Andreea OPRISOR [97%] | 41.62h |
| 38 | 3.5 | PrepaAudit2 |  | 0.69d | 2015-03-11 | 2015-03-11 |  | must start on 2015-03-11 | Vianney DANJOU; Gaetan BUSATO; Guillaume CONTE; Agathe FURET; Arbia MAGOURI; Andreea OPRISOR | 33h |
| 39 | 3.6 | Audit2 | milestone | 0d | 2015-03-11 | 2015-03-11 | 38 |  | Vianney DANJOU; Gaetan BUSATO; Guillaume CONTE; Agathe FURET; Arbia MAGOURI; Andreea OPRISOR |  |
| 40 | 3.7 | DebrifAudit + RepartitionTache |  |  | 2015-03-11 | 2015-03-11 | 39 |  |  | 2h |
| 41 | 4 | **TacheSoutenance** |  |  | 2015-03-12 | 2015-03-20 |  |  |  | 295.96h |
| 42 | 4.1 | **AchatBillet** |  |  | 2015-03-12 | 2015-03-17 |  |  |  | 41.91h |
| 43 | 4.1.1 | views |  |  | 2015-03-12 | 2015-03-12 |  | start no earlier than 2015-03-12 | Vianney DANJOU [92%] | 6.9h |
| 44 | 4.1.2 | Model |  |  | 2015-03-13 | 2015-03-13 | 49 | start no earlier than 2015-03-12 | Vianney DANJOU [92%] | 6.9h |
| 45 | 4.1.3 | DataAccesObject |  |  | 2015-03-16 | 2015-03-17 | 44 | start no earlier than 2015-03-12 | Vianney DANJOU [92%] | 13.8h |
| 46 | 4.1.4 | Controlers |  |  | 2015-03-16 | 2015-03-17 | 44 | start no earlier than 2015-03-12 | Gaetan BUSATO [97%] | 14.31h |
| 47 | 4.2 | **PlanifierCalendrier** |  |  | 2015-03-12 | 2015-03-17 |  |  |  | 57.36h |
| 48 | 4.2.1 | views |  |  | 2015-03-12 | 2015-03-12 |  | start no earlier than 2015-03-12 | Gaetan BUSATO [97%] | 7.28h |
| 49 | 4.2.2 | Model |  |  | 2015-03-12 | 2015-03-12 |  | start no earlier than 2015-03-12 | Agathe FURET [95%] | 7.12h |
| 50 | 4.2.3 | DataAccesObjets |  |  | 2015-03-13 | 2015-03-17 | 49 | start no earlier than 2015-03-12 | Agathe FURET [95%] | 21.38h |
| 51 | 4.2.4 | Controlers |  |  | 2015-03-13 | 2015-03-17 | 49 | start no earlier than 2015-03-12 | Guillaume CONTE [97%] | 21.58h |

| ID | WBS | Task | Type | Duration | Start | Finish | Predecessors | Constraint | Resources | Work |
| --- | --- | --- | --- | --- | --- | --- | --- | --- | --- | --- |
| 52 | 4.3 | **AttribuerMedaille** |  |  | 2015-03-12 | 2015-03-17 |  |  |  | 39.15h |
| 53 | 4.3.1 | views |  |  | 2015-03-12 | 2015-03-12 |  | start no earlier than 2015-03-12 | Guillaume CONTE [97%] | 7.28h |
| 54 | 4.3.2 | Model |  |  | 2015-03-13 | 2015-03-13 | 59 | start no earlier than 2015-03-12 | Arbia MAGOURI [77%] | 5.78h |
| 55 | 4.3.3 | DataAccesObject |  |  | 2015-03-16 | 2015-03-17 | 54 | start no earlier than 2015-03-12 | Arbia MAGOURI [77%] | 11.55h |
| 56 | 4.3.4 | Controlers |  |  | 2015-03-16 | 2015-03-17 | 54, 53 | start no earlier than 2015-03-12 | Andreea OPRISOR [97%] | 14.55h |
| 57 | 4.4 | **CreerClassement** |  |  | 2015-03-12 | 2015-03-16 |  |  |  | 42.15h |
| 58 | 4.4.1 | views |  |  | 2015-03-12 | 2015-03-12 |  | start no earlier than 2015-03-12 | Arbia MAGOURI [77%] | 5.78h |
| 59 | 4.4.2 | Model |  |  | 2015-03-12 | 2015-03-12 |  | start no earlier than 2015-03-12 | Andreea OPRISOR [97%] | 7.28h |
| 60 | 4.4.3 | DataAccesObject |  |  | 2015-03-13 | 2015-03-16 | 59 | start no earlier than 2015-03-12 | Gaetan BUSATO [97%] | 14.55h |
| 61 | 4.4.4 | Controlers |  |  | 2015-03-13 | 2015-03-16 | 59 | start no earlier than 2015-03-12 | Andreea OPRISOR [97%] | 14.55h |
| 62 | 4.5 | Integration |  |  | 2015-03-18 | 2015-03-19 | 52, 47, 42, 57 | start no earlier than 2015-03-18 | Vianney DANJOU [50%]; Gaetan BUSATO [97%]; Guillaume CONTE [97%]; Andreea OPRISOR [97%] | 50.3h |
| 63 | 4.6 | Rapport |  |  | 2015-03-18 | 2015-03-19 |  | must start on 2015-03-18 | Vianney DANJOU [42%]; Agathe FURET [95%]; Arbia MAGOURI [77%] | 32.1h |
| 64 | 4.7 | PrepaSoutenance |  | 0.69d | 2015-03-20 | 2015-03-20 |  | must start on 2015-03-20 | Vianney DANJOU; Gaetan BUSATO; Guillaume CONTE; Agathe FURET; Arbia MAGOURI; Andreea OPRISOR | 33h |
| 65 | 4.8 | Soutenance | milestone | 0d | 2015-03-20 | 2015-03-20 | 64 |  | Vianney DANJOU; Gaetan BUSATO; Guillaume CONTE; Agathe FURET; Arbia MAGOURI; Andreea OPRISOR |  |
